# Lịch sách dành cho trẻ em

How a schedule from MS Project changed from version to version. A marks actual dates.

## Version 1 (saved 2025-09-22, file Advanced Tracking A_Start.mpp)

| ID | WBS | Task | Duration | Start | Finish | Predecessors | Total float | Constraint |
| --- | --- | --- | --- | --- | --- | --- | --- | --- |
| 1 | 1 | **Họp nhân viên biên tập** | 60.12d | 2015-04-13 08:00 | 2015-07-06 09:00 |  | 103.75d |  |
| 2 |  | Editorial staff meeting 1 | 1h | 2015-04-13 08:00 | 2015-04-13 09:00 |  | 163.75d | start no earlier than 2015-04-13 08:00 |
| 3 |  | Editorial staff meeting 2 | 1h | 2015-04-20 08:00 | 2015-04-20 09:00 |  | 158.75d | start no earlier than 2015-04-20 08:00 |
| 4 |  | Editorial staff meeting 3 | 1h | 2015-04-27 08:00 | 2015-04-27 09:00 |  | 153.75d | start no earlier than 2015-04-27 08:00 |
| 5 |  | Editorial staff meeting 4 | 1h | 2015-05-04 08:00 | 2015-05-04 09:00 |  | 148.75d | start no earlier than 2015-05-04 08:00 |
| 6 |  | Editorial staff meeting 5 | 1h | 2015-05-11 08:00 | 2015-05-11 09:00 |  | 143.75d | start no earlier than 2015-05-11 08:00 |
| 7 |  | Editorial staff meeting 6 | 1h | 2015-05-18 08:00 | 2015-05-18 09:00 |  | 138.75d | start no earlier than 2015-05-18 08:00 |
| 8 |  | Editorial staff meeting 7 | 1h | 2015-05-25 08:00 | 2015-05-25 09:00 |  | 133.75d | start no earlier than 2015-05-25 08:00 |
| 9 |  | Editorial staff meeting 8 | 1h | 2015-06-01 08:00 | 2015-06-01 09:00 |  | 128.75d | start no earlier than 2015-06-01 08:00 |
| 10 |  | Editorial staff meeting 9 | 1h | 2015-06-08 08:00 | 2015-06-08 09:00 |  | 123.75d | start no earlier than 2015-06-08 08:00 |
| 11 |  | Editorial staff meeting 10 | 1h | 2015-06-15 08:00 | 2015-06-15 09:00 |  | 118.75d | start no earlier than 2015-06-15 08:00 |
| 12 |  | Editorial staff meeting 11 | 1h | 2015-06-22 08:00 | 2015-06-22 09:00 |  | 113.75d | start no earlier than 2015-06-22 08:00 |
| 13 |  | Editorial staff meeting 12 | 1h | 2015-06-29 08:00 | 2015-06-29 09:00 |  | 108.75d | start no earlier than 2015-06-29 08:00 |
| 14 |  | Editorial staff meeting 13 | 1h | 2015-07-06 08:00 | 2015-07-06 09:00 |  | 103.75d | start no earlier than 2015-07-06 08:00 |
| 15 | 2 | **Sự tiếp nhận** | 35.5d | 2015-04-06 08:00 | 2015-05-25 12:00 |  | 0d |  |
| 16 |  | Nhận bản thảo | 0d | 2015-04-06 08:00 | 2015-04-06 08:00 |  | 0d |  |
| 17 |  | Biên tập nội dung | 15d | 2015-04-06 08:00 | 2015-04-30 10:00 | 16 | 0d |  |
| 18 |  | Đánh giá tác phẩm gốc | 10.25d | 2015-04-23 10:00 | 2015-05-07 12:00 | 17FS-5d | 0d |  |
| 19 |  | Đánh giá tác giả về nội dung biên tập | 12d | 2015-05-07 13:00 | 2015-05-25 12:00 | 17, 18 | 0d |  |
| 20 |  | Bàn giao cho bộ phận biên tập | 0d | 2015-05-25 12:00 | 2015-05-25 12:00 | 19 | 0d |  |
| 21 | 3 | **Biên tập** | 29.12d | 2015-05-25 13:00 | 2015-07-03 14:00 | 15 | 0d |  |
| 22 |  | Sắp xếp bản thảo cho bản sao | 5.12d | 2015-05-25 13:00 | 2015-06-01 14:00 |  | 0d |  |
| 23 |  | Bản sao | 11.25d | 2015-06-01 14:00 | 2015-06-16 16:00 | 22 | 0d |  |
| 24 |  | Đánh giá của tác giả về bản sao | 10d | 2015-06-16 16:00 | 2015-06-30 16:00 | 23 | 0d |  |
| 25 |  | Kết hợp báo sao | 5.12d | 2015-06-26 11:00 | 2015-07-03 14:00 | 24FS-2.5% | 0d |  |
| 26 |  | Bàn giao cho bộ phận sản xuất | 0d | 2015-07-03 14:00 | 2015-07-03 14:00 | 25 | 0d |  |
| 27 | 4 | **Thiết kế và Sản xuất** | 58.25d | 2015-07-03 14:00 | 2015-09-23 16:00 | 21 | 0d |  |
| 28 |  | Set pages | 15d | 2015-07-03 14:00 | 2015-07-24 14:00 |  | 0d |  |
| 29 |  | Interior illustration design | 15.25d | 2015-07-03 14:00 | 2015-07-24 16:00 | 28SS | 0d |  |
| 30 | 4.3 | **1st Pages review** | 30d | 2015-07-24 16:00 | 2015-09-04 16:00 | 29 | 0d |  |
| 31 |  | Proofread and index | 10d | 2015-07-24 16:00 | 2015-08-07 16:00 |  | 0d | start no earlier than 2015-07-17 08:00 |
| 32 |  | Incorporate 1st Pages review | 10d | 2015-08-07 16:00 | 2015-08-21 16:00 | 31 | 0d |  |
| 33 |  | Send proofed pages to Production | 0d | 2015-08-21 16:00 | 2015-08-21 16:00 | 32 | 0d |  |
| 34 |  | Enter page corrections and index | 5d | 2015-08-21 16:00 | 2015-08-28 16:00 | 33 | 0d |  |
| 35 |  | Cover design | 5d | 2015-08-28 16:00 | 2015-09-04 16:00 | 34 | 0d |  |
| 36 | 4.4 | **2nd Pages review** | 13d | 2015-09-04 16:00 | 2015-09-23 16:00 |  | 0d |  |
| 37 |  | Proof and review | 6.5d | 2015-09-04 16:00 | 2015-09-15 11:00 | 35 | 0d |  |
| 38 |  | Send proofed pages to Production | 0d | 2015-09-15 11:00 | 2015-09-15 11:00 | 37 | 0d |  |
| 39 |  | Final review | 5d | 2015-09-16 16:00 | 2015-09-23 16:00 | 38 | 0d |  |
| 40 | 4.5 | **Design book's companion website** | 10d | 2015-09-04 16:00 | 2015-09-18 16:00 | 30 | 3d |  |
| 41 |  | Create mockup | 4.5d | 2015-09-04 16:00 | 2015-09-16 16:00 |  | 3d |  |
| 42 |  | Review with author | 2d | 2015-09-16 16:00 | 2015-09-18 16:00 | 41 | 3d |  |
| 43 | 5 | **Color prep and printing** | 46d | 2015-09-23 16:00 | 2015-11-26 16:00 | 40 | 0d |  |
| 44 |  | Send to color house | 1d | 2015-09-23 16:00 | 2015-09-28 16:00 | 36 | 0d |  |
| 45 |  | Generate proofs | 10d | 2015-09-28 16:00 | 2015-10-12 16:00 | 44 | 0d |  |
| 46 |  | Print and ship | 30d | 2015-10-15 16:00 | 2015-11-26 16:00 | 45FS+3d | 0d |  |
| 47 | 6 | **Book launch prep** | 22d | 2015-09-28 16:00 | 2015-10-28 16:00 |  | 21d |  |
| 48 |  | Launch planning | 5d | 2015-09-28 16:00 | 2015-10-05 16:00 | 44 | 21d |  |
| 49 |  | Assign launch team members | 1d | 2015-10-05 16:00 | 2015-10-06 16:00 | 48 | 21d |  |
| 50 |  | Complete author questionnaire | 5d | 2015-10-06 16:00 | 2015-10-13 16:00 | 49 | 21d |  |
| 51 |  | Schedule author interviews | 1d | 2015-10-13 16:00 | 2015-10-14 16:00 | 50 | 21d |  |
| 52 |  | Design and order marketing material | 10d | 2015-10-14 16:00 | 2015-10-28 16:00 | 51 | 21d |  |

## Version 2 (saved 2025-09-22, file Advanced Tracking B_Start.mpp)

Last finish stays 2015-11-26. Complete tasks 0 → 4.

Changed:

| ID | Task | Start | Finish | Duration | Complete | Total float | Other |
| --- | --- | --- | --- | --- | --- | --- | --- |
| 1 | **Họp nhân viên biên tập** | 2015-04-13 08:00 → 2012-04-23 08:00 A (-1085d) | 2015-07-06 09:00 → 2015-04-20 09:00 (-77d) | 60.12d → 780.12d | 0% → 15% | 103.75d → 158.88d |  |
| 2 | Họp nhân viên biên tập 1 | 2015-04-13 08:00 A | 2015-04-13 09:00 A |  | 0% → 100% | 163.75d → none | was named Editorial staff meeting 1 |
| 3 | Họp nhân viên biên tập 2 | 2015-04-20 08:00 A | 2015-04-20 09:00 A |  | 0% → 100% | 158.75d → none | was named Editorial staff meeting 2 |
| 4 | Họp nhân viên biên tập 3 | 2015-04-27 08:00 → 2012-04-23 08:00 (-1099d) | 2015-04-27 09:00 → 2012-04-23 09:00 (-1099d) |  |  | 153.75d → 938.88d | was named Editorial staff meeting 3; constraint start no earlier than 2015-04-27 08:00 → start no earlier than 2012-04-23 08:00 |
| 5 | Họp nhân viên biên tập 4 | 2015-05-04 08:00 → 2012-04-30 08:00 (-1099d) | 2015-05-04 09:00 → 2012-04-30 09:00 (-1099d) |  |  | 148.75d → 933.88d | was named Editorial staff meeting 4; constraint start no earlier than 2015-05-04 08:00 → start no earlier than 2012-04-30 08:00 |
| 6 | Họp nhân viên biên tập 5 | 2015-05-11 08:00 → 2012-05-07 08:00 (-1099d) | 2015-05-11 09:00 → 2012-05-07 09:00 (-1099d) |  |  | 143.75d → 928.88d | was named Editorial staff meeting 5; constraint start no earlier than 2015-05-11 08:00 → start no earlier than 2012-05-07 08:00 |
| 7 | Họp nhân viên biên tập 6 | 2015-05-18 08:00 → 2012-05-14 08:00 (-1099d) | 2015-05-18 09:00 → 2012-05-14 09:00 (-1099d) |  |  | 138.75d → 923.88d | was named Editorial staff meeting 6; constraint start no earlier than 2015-05-18 08:00 → start no earlier than 2012-05-14 08:00 |
| 8 | Họp nhân viên biên tập 7 | 2015-05-25 08:00 → 2012-05-21 08:00 (-1099d) | 2015-05-25 09:00 → 2012-05-21 09:00 (-1099d) |  |  | 133.75d → 918.88d | was named Editorial staff meeting 7; constraint start no earlier than 2015-05-25 08:00 → start no earlier than 2012-05-21 08:00 |
| 9 | Họp nhân viên biên tập 8 | 2015-06-01 08:00 → 2012-05-28 08:00 (-1099d) | 2015-06-01 09:00 → 2012-05-28 09:00 (-1099d) |  |  | 128.75d → 913.88d | was named Editorial staff meeting 8; constraint start no earlier than 2015-06-01 08:00 → start no earlier than 2012-05-28 08:00 |
| 10 | Họp nhân viên biên tập 9 | 2015-06-08 08:00 → 2012-06-04 08:00 (-1099d) | 2015-06-08 09:00 → 2012-06-04 09:00 (-1099d) |  |  | 123.75d → 908.88d | was named Editorial staff meeting 9; constraint start no earlier than 2015-06-08 08:00 → start no earlier than 2012-06-04 08:00 |
| 11 | Họp nhân viên biên tập 10 | 2015-06-15 08:00 → 2012-06-11 08:00 (-1099d) | 2015-06-15 09:00 → 2012-06-11 09:00 (-1099d) |  |  | 118.75d → 903.88d | was named Editorial staff meeting 10; constraint start no earlier than 2015-06-15 08:00 → start no earlier than 2012-06-11 08:00 |
| 12 | Họp nhân viên biên tập 11 | 2015-06-22 08:00 → 2012-06-18 08:00 (-1099d) | 2015-06-22 09:00 → 2012-06-18 09:00 (-1099d) |  |  | 113.75d → 898.88d | was named Editorial staff meeting 11; constraint start no earlier than 2015-06-22 08:00 → start no earlier than 2012-06-18 08:00 |
| 13 | Họp nhân viên biên tập 12 | 2015-06-29 08:00 → 2012-06-25 08:00 (-1099d) | 2015-06-29 09:00 → 2012-06-25 09:00 (-1099d) |  |  | 108.75d → 893.88d | was named Editorial staff meeting 12; constraint start no earlier than 2015-06-29 08:00 → start no earlier than 2012-06-25 08:00 |
| 14 | Họp nhân viên biên tập 13 | 2015-07-06 08:00 → 2012-07-02 08:00 (-1099d) | 2015-07-06 09:00 → 2012-07-02 09:00 (-1099d) |  |  | 103.75d → 888.88d | was named Editorial staff meeting 13; constraint start no earlier than 2015-07-06 08:00 → start no earlier than 2012-07-02 08:00 |
| 15 | **Sự tiếp nhận** | 2015-04-06 08:00 A | 2015-05-25 12:00 → 2015-05-28 15:00 (+3d) | 35.5d → 38.75d | 0% → 54% |  |  |
| 16 | Nhận bản thảo | 2015-04-06 08:00 A | 2015-04-06 08:00 A |  | 0% → 100% | 0d → none |  |
| 17 | Biên tập nội dung | 2015-04-06 08:00 A | 2015-04-30 10:00 A |  | 0% → 100% | 0d → none | resources Carole Poland → Trần Thanh Diện |
| 18 | Đánh giá tác phẩm gốc | 2015-04-23 10:00 A | 2015-05-07 12:00 → 2015-05-12 15:00 (+5d) | 10.25d → 13.5d | 0% → 50% |  | resources Hany Morcos; Jane Dow → Huỳnh Phương; Lê Xuân Thy |
| 19 | Đánh giá của tác giả về nội dung biên tập | 2015-05-07 13:00 → 2015-05-12 15:00 (+5d) | 2015-05-25 12:00 → 2015-05-28 15:00 (+3d) |  |  |  | was named Đánh giá tác giả về nội dung biên tập |
| 20 | Handoff to Editorial | 2015-05-25 12:00 → 2015-05-28 15:00 (+3d) | 2015-05-25 12:00 → 2015-05-28 15:00 (+3d) |  |  |  | was named Bàn giao cho bộ phận biên tập |
| 21 | **Editorial** | 2015-05-25 13:00 → 2015-05-28 15:00 (+3d) | 2015-07-03 14:00 → 2015-07-08 16:00 (+5d) |  |  |  | was named Biên tập |
| 22 | Organize manuscript for copyedit | 2015-05-25 13:00 → 2015-05-28 15:00 (+3d) | 2015-06-01 14:00 → 2015-06-04 16:00 (+3d) |  |  |  | was named Sắp xếp bản thảo cho bản sao |
| 23 | Copyedit | 2015-06-01 14:00 → 2015-06-04 16:00 (+3d) | 2015-06-16 16:00 → 2015-06-22 09:00 (+6d) |  |  |  | was named Bản sao |
| 24 | Author review of copyedit | 2015-06-16 16:00 → 2015-06-22 09:00 (+6d) | 2015-06-30 16:00 → 2015-07-06 09:00 (+6d) |  |  |  | was named Đánh giá của tác giả về bản sao |
| 25 | Copyedit incorp | 2015-06-26 11:00 → 2015-07-01 14:00 (+5d) | 2015-07-03 14:00 → 2015-07-08 16:00 (+5d) |  |  |  | was named Kết hợp báo sao |
| 26 | Handoff to Production | 2015-07-03 14:00 → 2015-07-08 16:00 (+5d) | 2015-07-03 14:00 → 2015-07-08 16:00 (+5d) |  |  |  | was named Bàn giao cho bộ phận sản xuất |
| 27 | **Design and Production** | 2015-07-03 14:00 → 2015-07-08 16:00 (+5d) | 2015-09-23 16:00 → 2015-09-25 17:00 (+2d) | 58.25d → 57.12d |  |  | was named Thiết kế và Sản xuất |
| 28 | Set pages | 2015-07-03 14:00 → 2015-07-08 16:00 (+5d) | 2015-07-24 14:00 → 2015-07-29 16:00 (+5d) |  |  |  |  |
| 29 | Interior illustration design | 2015-07-03 14:00 → 2015-07-08 16:00 (+5d) | 2015-07-24 16:00 → 2015-07-30 09:00 (+6d) |  |  |  |  |
| 30 | **1st Pages review** | 2015-07-24 16:00 → 2015-07-30 09:00 (+6d) | 2015-09-04 16:00 → 2015-09-10 09:00 (+6d) |  |  |  |  |
| 31 | Proofread and index | 2015-07-24 16:00 → 2015-07-30 09:00 (+6d) | 2015-08-07 16:00 → 2015-08-13 09:00 (+6d) |  |  |  |  |
| 32 | Incorporate 1st Pages review | 2015-08-07 16:00 → 2015-08-13 09:00 (+6d) | 2015-08-21 16:00 → 2015-08-27 09:00 (+6d) |  |  |  |  |
| 33 | Send proofed pages to Production | 2015-08-21 16:00 → 2015-08-27 09:00 (+6d) | 2015-08-21 16:00 → 2015-08-27 09:00 (+6d) |  |  |  |  |
| 34 | Enter page corrections and index | 2015-08-21 16:00 → 2015-08-27 09:00 (+6d) | 2015-08-28 16:00 → 2015-09-03 09:00 (+6d) |  |  |  |  |
| 35 | Cover design | 2015-08-28 16:00 → 2015-09-03 09:00 (+6d) | 2015-09-04 16:00 → 2015-09-10 09:00 (+6d) |  |  |  |  |
| 36 | **2nd Pages review** | 2015-09-04 16:00 → 2015-09-10 09:00 (+6d) | 2015-09-23 16:00 → 2015-09-25 17:00 (+2d) | 13d → 11.88d |  |  |  |
| 37 | Proof and review | 2015-09-04 16:00 → 2015-09-10 09:00 (+6d) | 2015-09-15 11:00 → 2015-09-18 14:00 (+3d) |  |  |  |  |
| 38 | Send proofed pages to Production | 2015-09-15 11:00 → 2015-09-18 14:00 (+3d) | 2015-09-15 11:00 → 2015-09-18 14:00 (+3d) |  |  |  |  |
| 39 | Final review | 2015-09-16 16:00 → 2015-09-21 08:00 (+5d) | 2015-09-23 16:00 → 2015-09-25 17:00 (+2d) |  |  |  |  |
| 40 | **Design book's companion website** | 2015-09-04 16:00 → 2015-09-10 09:00 (+6d) | 2015-09-18 16:00 → 2015-09-24 09:00 (+6d) |  |  | 3d → 1.88d |  |
| 41 | Create mockup | 2015-09-04 16:00 → 2015-09-10 09:00 (+6d) | 2015-09-16 16:00 → 2015-09-22 09:00 (+6d) |  |  | 3d → 1.88d |  |
| 42 | Review with author | 2015-09-16 16:00 → 2015-09-22 09:00 (+6d) | 2015-09-18 16:00 → 2015-09-24 09:00 (+6d) |  |  | 3d → 1.88d |  |
| 43 | **Color prep and printing** | 2015-09-23 16:00 → 2015-09-28 08:00 (+5d) | 2015-11-26 16:00 → 2015-11-26 17:00 | 46d → 44d |  |  |  |
| 44 | Send to color house | 2015-09-23 16:00 → 2015-09-28 08:00 (+5d) | 2015-09-28 16:00 → 2015-09-28 17:00 |  |  |  |  |
| 45 | Generate proofs | 2015-09-28 16:00 → 2015-09-29 08:00 (+1d) | 2015-10-12 16:00 → 2015-10-12 17:00 |  |  |  |  |
| 46 | Print and ship | 2015-10-15 16:00 → 2015-10-16 08:00 (+1d) | 2015-11-26 16:00 → 2015-11-26 17:00 |  |  |  |  |
| 47 | **Book launch prep** | 2015-09-28 16:00 → 2015-09-29 08:00 (+1d) | 2015-10-28 16:00 → 2015-10-28 17:00 |  |  |  |  |
| 48 | Launch planning | 2015-09-28 16:00 → 2015-09-29 08:00 (+1d) | 2015-10-05 16:00 → 2015-10-05 17:00 |  |  |  |  |
| 49 | Assign launch team members | 2015-10-05 16:00 → 2015-10-06 08:00 (+1d) | 2015-10-06 16:00 → 2015-10-06 17:00 |  |  |  |  |
| 50 | Complete author questionnaire | 2015-10-06 16:00 → 2015-10-07 08:00 (+1d) | 2015-10-13 16:00 → 2015-10-13 17:00 |  |  |  |  |
| 51 | Schedule author interviews | 2015-10-13 16:00 → 2015-10-14 08:00 (+1d) | 2015-10-14 16:00 → 2015-10-14 17:00 |  |  |  |  |
| 52 | Design and order marketing material | 2015-10-14 16:00 → 2015-10-15 08:00 (+1d) | 2015-10-28 16:00 → 2015-10-28 17:00 |  |  |  |  |

## Version 3 (saved 2025-09-22, file Advanced Tracking C_Start.mpp)

Last finish stays 2015-11-26. Complete tasks 4 → 12.

Changed:

| ID | Task | Start | Finish | Duration | Complete | Total float | Other |
| --- | --- | --- | --- | --- | --- | --- | --- |
| 1 | **Editorial staff meeting** | 2012-04-23 08:00 A → 2015-04-13 08:00 A (+1085d) | 2015-04-20 09:00 → 2015-07-06 09:00 (+77d) | 780.12d → 60.12d | 15% → 54% | 158.88d → 103.88d | was named Họp nhân viên biên tập |
| 2 | Editorial staff meeting 1 |  |  |  |  |  | was named Họp nhân viên biên tập 1 |
| 3 | Editorial staff meeting 2 |  |  |  |  |  | was named Họp nhân viên biên tập 2 |
| 4 | Editorial staff meeting 3 | 2012-04-23 08:00 → 2015-04-27 08:00 A (+1099d) | 2012-04-23 09:00 → 2015-04-27 09:00 A (+1099d) |  | 0% → 100% | 938.88d → none | was named Họp nhân viên biên tập 3; constraint start no earlier than 2012-04-23 08:00 → start no earlier than 2015-04-27 08:00 |
| 5 | Editorial staff meeting 4 | 2012-04-30 08:00 → 2015-05-04 08:00 A (+1099d) | 2012-04-30 09:00 → 2015-05-04 09:00 A (+1099d) |  | 0% → 100% | 933.88d → none | was named Họp nhân viên biên tập 4; constraint start no earlier than 2012-04-30 08:00 → start no earlier than 2015-05-04 08:00 |
| 6 | Editorial staff meeting 5 | 2012-05-07 08:00 → 2015-05-11 08:00 A (+1099d) | 2012-05-07 09:00 → 2015-05-11 09:00 A (+1099d) |  | 0% → 100% | 928.88d → none | was named Họp nhân viên biên tập 5; constraint start no earlier than 2012-05-07 08:00 → start no earlier than 2015-05-11 08:00 |
| 7 | Editorial staff meeting 6 | 2012-05-14 08:00 → 2015-05-18 08:00 A (+1099d) | 2012-05-14 09:00 → 2015-05-18 09:00 A (+1099d) |  | 0% → 100% | 923.88d → none | was named Họp nhân viên biên tập 6; constraint start no earlier than 2012-05-14 08:00 → start no earlier than 2015-05-18 08:00 |
| 8 | Editorial staff meeting 7 | 2012-05-21 08:00 → 2015-05-25 08:00 A (+1099d) | 2012-05-21 09:00 → 2015-05-25 09:00 A (+1099d) |  | 0% → 100% | 918.88d → none | was named Họp nhân viên biên tập 7; constraint start no earlier than 2012-05-21 08:00 → start no earlier than 2015-05-25 08:00 |
| 9 | Editorial staff meeting 8 | 2012-05-28 08:00 → 2015-06-01 08:00 (+1099d) | 2012-05-28 09:00 → 2015-06-01 09:00 (+1099d) |  |  | 913.88d → 128.88d | was named Họp nhân viên biên tập 8; constraint start no earlier than 2012-05-28 08:00 → start no earlier than 2015-06-01 08:00 |
| 10 | Editorial staff meeting 9 | 2012-06-04 08:00 → 2015-06-08 08:00 (+1099d) | 2012-06-04 09:00 → 2015-06-08 09:00 (+1099d) |  |  | 908.88d → 123.88d | was named Họp nhân viên biên tập 9; constraint start no earlier than 2012-06-04 08:00 → start no earlier than 2015-06-08 08:00 |
| 11 | Editorial staff meeting 10 | 2012-06-11 08:00 → 2015-06-15 08:00 (+1099d) | 2012-06-11 09:00 → 2015-06-15 09:00 (+1099d) |  |  | 903.88d → 118.88d | was named Họp nhân viên biên tập 10; constraint start no earlier than 2012-06-11 08:00 → start no earlier than 2015-06-15 08:00 |
| 12 | Editorial staff meeting 11 | 2012-06-18 08:00 → 2015-06-22 08:00 (+1099d) | 2012-06-18 09:00 → 2015-06-22 09:00 (+1099d) |  |  | 898.88d → 113.88d | was named Họp nhân viên biên tập 11; constraint start no earlier than 2012-06-18 08:00 → start no earlier than 2015-06-22 08:00 |
| 13 | Editorial staff meeting 12 | 2012-06-25 08:00 → 2015-06-29 08:00 (+1099d) | 2012-06-25 09:00 → 2015-06-29 09:00 (+1099d) |  |  | 893.88d → 108.88d | was named Họp nhân viên biên tập 12; constraint start no earlier than 2012-06-25 08:00 → start no earlier than 2015-06-29 08:00 |
| 14 | Editorial staff meeting 13 | 2012-07-02 08:00 → 2015-07-06 08:00 (+1099d) | 2012-07-02 09:00 → 2015-07-06 09:00 (+1099d) |  |  | 888.88d → 103.88d | was named Họp nhân viên biên tập 13; constraint start no earlier than 2012-07-02 08:00 → start no earlier than 2015-07-06 08:00 |
| 15 | **Acquisition** |  | 2015-05-28 15:00 → 2015-05-26 17:00 A (-2d) | 38.75d → 37d | 54% → 100% | 0d → none | was named Sự tiếp nhận |
| 16 | Manuscript received |  |  |  |  |  | was named Nhận bản thảo |
| 17 | Content edit |  |  |  |  |  | was named Biên tập nội dung; resources Trần Thanh Diện → Carole Poland |
| 18 | Original art review |  | 2015-05-12 15:00 → 2015-05-07 12:00 A (-5d) | 13.5d → 10.25d | 50% → 100% | 0d → none | was named Đánh giá tác phẩm gốc; resources Huỳnh Phương; Lê Xuân Thy → Hany Morcos; Jane Dow |
| 19 | Author review of content edit | 2015-05-12 15:00 → 2015-05-07 13:00 A (-5d) | 2015-05-28 15:00 → 2015-05-26 17:00 A (-2d) | 12d → 13.5d | 0% → 100% | 0d → none | was named Đánh giá của tác giả về nội dung biên tập |
| 20 | Handoff to Editorial | 2015-05-28 15:00 → 2015-05-26 17:00 A (-2d) | 2015-05-28 15:00 → 2015-05-26 17:00 A (-2d) |  | 0% → 100% | 0d → none |  |
| 21 | **Biên Tập** | 2015-05-28 15:00 → 2015-05-27 08:00 A (-1d) | 2015-07-08 16:00 → 2015-07-07 15:00 (-1d) | 29.12d → 29.75d | 0% → 3% |  | was named Editorial |
| 22 | Sắp xếp bản thảo cho bản sao | 2015-05-28 15:00 → 2015-05-27 08:00 A (-1d) | 2015-06-04 16:00 → 2015-06-02 17:00 (-2d) | 5.12d → 5d | 0% → 20% |  | was named Organize manuscript for copyedit; resources Hany Morcos; Dan Jump [50%] → Huỳnh Phương; Phan Minh Châu [50%] |
| 23 | Copyedit | 2015-06-04 16:00 → 2015-06-03 08:00 (-1d) | 2015-06-22 09:00 → 2015-06-18 17:00 (-4d) | 11.25d → 11.5d |  |  |  |
| 24 | Author review of copyedit | 2015-06-22 09:00 → 2015-06-19 08:00 (-3d) | 2015-07-06 09:00 → 2015-07-02 17:00 (-4d) |  |  |  |  |
| 25 | Copyedit incorp | 2015-07-01 14:00 → 2015-06-30 13:00 (-1d) | 2015-07-08 16:00 → 2015-07-07 15:00 (-1d) |  |  |  |  |
| 26 | Handoff to Production | 2015-07-08 16:00 → 2015-07-07 15:00 (-1d) | 2015-07-08 16:00 → 2015-07-07 15:00 (-1d) |  |  |  |  |
| 27 | **Design and Production** | 2015-07-08 16:00 → 2015-07-07 15:00 (-1d) |  | 57.12d → 58.25d |  |  |  |
| 28 | Set pages | 2015-07-08 16:00 → 2015-07-07 15:00 (-1d) | 2015-07-29 16:00 → 2015-07-28 15:00 (-1d) |  |  |  |  |
| 29 | Interior illustration design | 2015-07-08 16:00 → 2015-07-07 15:00 (-1d) | 2015-07-30 09:00 → 2015-07-28 17:00 (-2d) |  |  |  |  |
| 30 | **1st Pages review** | 2015-07-30 09:00 → 2015-07-29 08:00 (-1d) | 2015-09-10 09:00 → 2015-09-08 17:00 (-2d) |  |  |  |  |
| 31 | Proofread and index | 2015-07-30 09:00 → 2015-07-29 08:00 (-1d) | 2015-08-13 09:00 → 2015-08-11 17:00 (-2d) |  |  |  |  |
| 32 | Incorporate 1st Pages review | 2015-08-13 09:00 → 2015-08-12 08:00 (-1d) | 2015-08-27 09:00 → 2015-08-25 17:00 (-2d) |  |  |  |  |
| 33 | Send proofed pages to Production | 2015-08-27 09:00 → 2015-08-25 17:00 (-2d) | 2015-08-27 09:00 → 2015-08-25 17:00 (-2d) |  |  |  |  |
| 34 | Enter page corrections and index | 2015-08-27 09:00 → 2015-08-26 08:00 (-1d) | 2015-09-03 09:00 → 2015-09-01 17:00 (-2d) |  |  |  |  |
| 35 | Cover design | 2015-09-03 09:00 → 2015-09-02 08:00 (-1d) | 2015-09-10 09:00 → 2015-09-08 17:00 (-2d) |  |  |  |  |
| 36 | **2nd Pages review** | 2015-09-10 09:00 → 2015-09-09 08:00 (-1d) |  | 11.88d → 13d |  |  |  |
| 37 | Proof and review | 2015-09-10 09:00 → 2015-09-09 08:00 (-1d) | 2015-09-18 14:00 → 2015-09-17 12:00 (-1d) |  |  |  |  |
| 38 | Send proofed pages to Production | 2015-09-18 14:00 → 2015-09-17 12:00 (-1d) | 2015-09-18 14:00 → 2015-09-17 12:00 (-1d) |  |  |  |  |
| 40 | **Design book's companion website** | 2015-09-10 09:00 → 2015-09-09 08:00 (-1d) | 2015-09-24 09:00 → 2015-09-22 17:00 (-2d) |  |  | 1.88d → 3d |  |
| 41 | Create mockup | 2015-09-10 09:00 → 2015-09-09 08:00 (-1d) | 2015-09-22 09:00 → 2015-09-18 17:00 (-4d) |  |  | 1.88d → 3d |  |
| 42 | Review with author | 2015-09-22 09:00 → 2015-09-21 08:00 (-1d) | 2015-09-24 09:00 → 2015-09-22 17:00 (-2d) |  |  | 1.88d → 3d |  |

## Version 4 (saved 2025-09-22, file Advanced Tracking D_Start.mpp)

Last finish 2015-11-26 → 2015-12-03 (+7d). Complete tasks 12 → 19.

Changed:

| ID | Task | Start | Finish | Duration | Complete | Total float | Other |
| --- | --- | --- | --- | --- | --- | --- | --- |
| 1 | **Editorial staff meeting** | 2015-04-13 08:00 A → 2015-04-13 A | 2015-07-06 09:00 → 2015-08-05 (+30d) | 60.12d → 82.12d | 54% → 37% | 103.88d → 86.88d | baseline start 2015-04-13 08:00 → 2015-04-13; baseline finish 2015-07-06 09:00 → 2015-07-06 |
| 2 | Editorial staff meeting 1 | 2015-04-13 08:00 A → 2015-04-13 A | 2015-04-13 09:00 A → 2015-04-13 A |  |  |  | constraint start no earlier than 2015-04-13 08:00 → start no earlier than 2015-04-13; baseline start 2015-04-13 08:00 → 2015-04-13; baseline finish 2015-04-13 09:00 → 2015-04-13 |
| 3 | Editorial staff meeting 2 | 2015-04-20 08:00 A → 2015-04-20 A | 2015-04-20 09:00 A → 2015-04-20 A |  |  |  | constraint start no earlier than 2015-04-20 08:00 → start no earlier than 2015-04-20; baseline start 2015-04-20 08:00 → 2015-04-20; baseline finish 2015-04-20 09:00 → 2015-04-20 |
| 4 | Editorial staff meeting 3 | 2015-04-27 08:00 A → 2015-04-27 A | 2015-04-27 09:00 A → 2015-04-27 A |  |  |  | constraint start no earlier than 2015-04-27 08:00 → start no earlier than 2015-04-27; baseline start 2015-04-27 08:00 → 2015-04-27; baseline finish 2015-04-27 09:00 → 2015-04-27 |
| 5 | Editorial staff meeting 4 | 2015-05-04 08:00 A → 2015-05-04 A | 2015-05-04 09:00 A → 2015-05-04 A |  |  |  | constraint start no earlier than 2015-05-04 08:00 → start no earlier than 2015-05-04; baseline start 2015-05-04 08:00 → 2015-05-04; baseline finish 2015-05-04 09:00 → 2015-05-04 |
| 6 | Editorial staff meeting 5 | 2015-05-11 08:00 A → 2015-05-11 A | 2015-05-11 09:00 A → 2015-05-11 A |  |  |  | constraint start no earlier than 2015-05-11 08:00 → start no earlier than 2015-05-11; baseline start 2015-05-11 08:00 → 2015-05-11; baseline finish 2015-05-11 09:00 → 2015-05-11 |
| 7 | Editorial staff meeting 6 | 2015-05-18 08:00 A → 2015-05-18 A | 2015-05-18 09:00 A → 2015-05-18 A |  |  |  | constraint start no earlier than 2015-05-18 08:00 → start no earlier than 2015-05-18; baseline start 2015-05-18 08:00 → 2015-05-18; baseline finish 2015-05-18 09:00 → 2015-05-18 |
| 8 | Editorial staff meeting 7 | 2015-05-25 08:00 A → 2015-05-25 A | 2015-05-25 09:00 A → 2015-05-25 A |  |  |  | constraint start no earlier than 2015-05-25 08:00 → start no earlier than 2015-05-25; baseline start 2015-05-25 08:00 → 2015-05-25; baseline finish 2015-05-25 09:00 → 2015-05-25 |
| 9 | Editorial staff meeting 8 | 2015-06-01 08:00 → 2015-08-04 (+64d) | 2015-06-01 09:00 → 2015-08-05 (+65d) | 1h → 2h |  | 128.88d → 81.88d | constraint start no earlier than 2015-06-01 08:00 → start no earlier than 2015-08-04; baseline start 2015-06-01 08:00 → 2015-06-01; baseline finish 2015-06-01 09:00 → 2015-06-01 |
| 10 | Editorial staff meeting 9 | 2015-06-08 08:00 → 2015-08-04 (+57d) | 2015-06-08 09:00 → 2015-08-05 (+58d) | 1h → 2h |  | 123.88d → 81.88d | constraint start no earlier than 2015-06-08 08:00 → start no earlier than 2015-08-04; baseline start 2015-06-08 08:00 → 2015-06-08; baseline finish 2015-06-08 09:00 → 2015-06-08 |
| 11 | Editorial staff meeting 10 | 2015-06-15 08:00 → 2015-08-04 (+50d) | 2015-06-15 09:00 → 2015-08-05 (+51d) | 1h → 2h |  | 118.88d → 81.88d | constraint start no earlier than 2015-06-15 08:00 → start no earlier than 2015-08-04; baseline start 2015-06-15 08:00 → 2015-06-15; baseline finish 2015-06-15 09:00 → 2015-06-15 |
| 12 | Editorial staff meeting 11 | 2015-06-22 08:00 → 2015-08-04 (+43d) | 2015-06-22 09:00 → 2015-08-05 (+44d) | 1h → 2h |  | 113.88d → 81.88d | constraint start no earlier than 2015-06-22 08:00 → start no earlier than 2015-08-04; baseline start 2015-06-22 08:00 → 2015-06-22; baseline finish 2015-06-22 09:00 → 2015-06-22 |
| 13 | Editorial staff meeting 12 | 2015-06-29 08:00 → 2015-08-04 (+36d) | 2015-06-29 09:00 → 2015-08-05 (+37d) | 1h → 2h |  | 108.88d → 81.88d | constraint start no earlier than 2015-06-29 08:00 → start no earlier than 2015-08-04; baseline start 2015-06-29 08:00 → 2015-06-29; baseline finish 2015-06-29 09:00 → 2015-06-29 |
| 14 | Editorial staff meeting 13 | 2015-07-06 08:00 → 2015-08-04 (+29d) | 2015-07-06 09:00 → 2015-08-05 (+30d) | 1h → 2h |  | 103.88d → 81.88d | constraint start no earlier than 2015-07-06 08:00 → start no earlier than 2015-08-04; baseline start 2015-07-06 08:00 → 2015-07-06; baseline finish 2015-07-06 09:00 → 2015-07-06 |
| 15 | **Acquisition** | 2015-04-06 08:00 A → 2015-04-06 A | 2015-05-26 17:00 A → 2015-05-26 A |  |  |  | baseline start 2015-04-06 08:00 → 2015-04-06; baseline finish 2015-05-25 12:00 → 2015-05-25 |
| 16 | Manuscript received | 2015-04-06 08:00 A → 2015-04-06 A | 2015-04-06 08:00 A → 2015-04-06 A |  |  |  | baseline start 2015-04-06 08:00 → 2015-04-06; baseline finish 2015-04-06 08:00 → 2015-04-06 |
| 17 | Content edit | 2015-04-06 08:00 A → 2015-04-06 A | 2015-04-30 10:00 A → 2015-04-30 A |  |  |  | baseline start 2015-04-06 08:00 → 2015-04-06; baseline finish 2015-04-30 10:00 → 2015-04-30 |
| 18 | Original art review | 2015-04-23 10:00 A → 2015-04-23 A | 2015-05-07 12:00 A → 2015-05-07 A |  |  |  | baseline start 2015-04-23 10:00 → 2015-04-23; baseline finish 2015-05-07 12:00 → 2015-05-07 |
| 19 | Author review of content edit | 2015-05-07 13:00 A → 2015-05-07 A | 2015-05-26 17:00 A → 2015-05-26 A |  |  |  | baseline start 2015-05-07 13:00 → 2015-05-07; baseline finish 2015-05-25 12:00 → 2015-05-25 |
| 20 | Handoff to Editorial | 2015-05-26 17:00 A → 2015-05-26 A | 2015-05-26 17:00 A → 2015-05-26 A |  |  |  | baseline start 2015-05-25 12:00 → 2015-05-25; baseline finish 2015-05-25 12:00 → 2015-05-25 |
| 21 | **Editorial** | 2015-05-27 08:00 A → 2015-05-27 A | 2015-07-07 15:00 → 2015-07-06 A (-1d) | 29.75d → 28.4d | 3% → 100% | 0d → none | was named Biên Tập; baseline start 2015-05-25 13:00 → 2015-05-25; baseline finish 2015-07-03 14:00 → 2015-07-03 |
| 22 | Organize manuscript for copyedit | 2015-05-27 08:00 A → 2015-05-27 A | 2015-06-02 17:00 → 2015-06-02 A |  | 20% → 100% | 0d → none | was named Sắp xếp bản thảo cho bản sao; resources Huỳnh Phương; Phan Minh Châu [50%] → Hany Morcos; Dan Jump [50%]; baseline start 2015-05-25 13:00 → 2015-05-25; baseline finish 2015-06-01 14:00 → 2015-06-01 |
| 23 | Copyedit | 2015-06-03 08:00 → 2015-06-03 A | 2015-06-18 17:00 → 2015-06-17 A (-1d) | 11.5d → 10.5d | 0% → 100% | 0d → none | baseline start 2015-06-01 14:00 → 2015-06-01; baseline finish 2015-06-16 16:00 → 2015-06-16 |
| 24 | Author review of copyedit | 2015-06-19 08:00 → 2015-06-17 A (-2d) | 2015-07-02 17:00 → 2015-07-01 A (-1d) | 10d → 10.2d | 0% → 100% | 0d → none | baseline start 2015-06-16 16:00 → 2015-06-16; baseline finish 2015-06-30 16:00 → 2015-06-30 |
| 25 | Copyedit incorp | 2015-06-30 13:00 → 2015-06-29 A (-1d) | 2015-07-07 15:00 → 2015-07-06 A (-1d) |  | 0% → 100% | 0d → none | baseline start 2015-06-26 11:00 → 2015-06-26; baseline finish 2015-07-03 14:00 → 2015-07-03 |
| 26 | Handoff to Production | 2015-07-07 15:00 → 2015-07-06 A (-1d) | 2015-07-07 15:00 → 2015-07-06 A (-1d) |  | 0% → 100% | 0d → none | baseline start 2015-07-03 14:00 → 2015-07-03; baseline finish 2015-07-03 14:00 → 2015-07-03 |
| 27 | **Design and Production** | 2015-07-07 15:00 → 2015-07-06 A (-1d) | 2015-09-25 17:00 → 2015-09-30 (+5d) | 58.25d → 62.6d | 0% → 43% | 0d → 2d | baseline start 2015-07-03 14:00 → 2015-07-03; baseline finish 2015-09-23 16:00 → 2015-09-23 |
| 28 | Set pages | 2015-07-07 15:00 → 2015-07-06 A (-1d) | 2015-07-28 15:00 → 2015-07-27 A (-1d) |  | 0% → 100% | 0d → none | baseline start 2015-07-03 14:00 → 2015-07-03; baseline finish 2015-07-24 14:00 → 2015-07-24 |
| 29 | Interior illustration design | 2015-07-07 15:00 → 2015-07-06 A (-1d) | 2015-07-28 17:00 → 2015-07-29 A (+1d) | 15.25d → 17.6d | 0% → 100% | 0d → none | baseline start 2015-07-03 14:00 → 2015-07-03; baseline finish 2015-07-24 16:00 → 2015-07-24 |
| 30 | **Đánh giá các trang lần thứ nhất** | 2015-07-29 08:00 → 2015-07-30 A (+1d) | 2015-09-08 17:00 → 2015-09-11 (+3d) | 30d → 32d | 0% → 7% | 0d → 3.5d | was named 1st Pages review; baseline start 2015-07-24 16:00 → 2015-07-24; baseline finish 2015-09-04 16:00 → 2015-09-04 |
| 31 | Hiệu đỉnh và lập chỉ mục | 2015-07-29 08:00 → 2015-07-30 A (+1d) | 2015-08-11 17:00 → 2015-08-14 (+3d) |  | 0% → 20% | 0d → 3.5d | was named Proofread and index; constraint start no earlier than 2015-07-17 08:00 → start no earlier than 2015-07-17; baseline start 2015-07-24 16:00 → 2015-07-24; baseline finish 2015-08-07 16:00 → 2015-08-07 |
| 32 | Kết hợp đánh giá các trang lần thứ nhất | 2015-08-12 08:00 → 2015-08-17 (+5d) | 2015-08-25 17:00 → 2015-08-28 (+3d) |  |  | 0d → 3.5d | was named Incorporate 1st Pages review; baseline start 2015-08-07 16:00 → 2015-08-07; baseline finish 2015-08-21 16:00 → 2015-08-21 |
| 33 | Gửi các trang đã hiệu chỉnh đến bộ phận sản xuất | 2015-08-25 17:00 → 2015-08-28 (+3d) | 2015-08-25 17:00 → 2015-08-28 (+3d) |  |  | 0d → 3.5d | was named Send proofed pages to Production; baseline start 2015-08-21 16:00 → 2015-08-21; baseline finish 2015-08-21 16:00 → 2015-08-21 |
| 34 | Nhập các chỉnh sửa trang và chỉ mục | 2015-08-26 08:00 → 2015-08-31 (+5d) | 2015-09-01 17:00 → 2015-09-04 (+3d) |  |  | 0d → 3.5d | was named Enter page corrections and index; baseline start 2015-08-21 16:00 → 2015-08-21; baseline finish 2015-08-28 16:00 → 2015-08-28 |
| 35 | Thiết kế trang | 2015-09-02 08:00 → 2015-09-07 (+5d) | 2015-09-08 17:00 → 2015-09-11 (+3d) |  |  | 0d → 3.5d | was named Cover design; baseline start 2015-08-28 16:00 → 2015-08-28; baseline finish 2015-09-04 16:00 → 2015-09-04 |
| 36 | **Đánh gái các trang lần thư 2** | 2015-09-09 08:00 → 2015-09-14 (+5d) | 2015-09-25 17:00 → 2015-09-30 (+5d) |  |  | 0d → 2d | was named 2nd Pages review; baseline start 2015-09-04 16:00 → 2015-09-04; baseline finish 2015-09-23 16:00 → 2015-09-23 |
| 37 | Proof and review | 2015-09-09 08:00 → 2015-09-14 (+5d) | 2015-09-17 12:00 → 2015-09-22 (+5d) |  |  | 0d → 3.5d | baseline start 2015-09-04 16:00 → 2015-09-04; baseline finish 2015-09-15 11:00 → 2015-09-15 |
| 38 | Send proofed pages to Production | 2015-09-17 12:00 → 2015-09-22 (+5d) | 2015-09-17 12:00 → 2015-09-22 (+5d) |  |  | 0d → 3.5d | baseline start 2015-09-15 11:00 → 2015-09-15; baseline finish 2015-09-15 11:00 → 2015-09-15 |
| 39 | Final review | 2015-09-21 08:00 → 2015-09-24 (+3d) | 2015-09-25 17:00 → 2015-09-30 (+5d) |  |  | 0d → 2d | baseline start 2015-09-16 16:00 → 2015-09-16; baseline finish 2015-09-23 16:00 → 2015-09-23 |
| 40 | **Design book's companion website** | 2015-09-09 08:00 → 2015-09-14 (+5d) | 2015-09-22 17:00 → 2015-09-25 (+3d) |  |  | 3d → 5d | baseline start 2015-09-04 16:00 → 2015-09-04; baseline finish 2015-09-18 16:00 → 2015-09-18 |
| 41 | Create mockup | 2015-09-09 08:00 → 2015-09-14 (+5d) | 2015-09-18 17:00 → 2015-09-23 (+5d) |  |  | 3d → 5d | baseline start 2015-09-04 16:00 → 2015-09-04; baseline finish 2015-09-16 16:00 → 2015-09-16 |
| 42 | Review with author | 2015-09-21 08:00 → 2015-09-24 (+3d) | 2015-09-22 17:00 → 2015-09-25 (+3d) |  |  | 3d → 5d | baseline start 2015-09-16 16:00 → 2015-09-16; baseline finish 2015-09-18 16:00 → 2015-09-18 |
| 43 | **Color prep and printing** | 2015-09-28 08:00 → 2015-10-05 (+7d) | 2015-11-26 17:00 → 2015-12-03 (+7d) |  |  |  | baseline start 2015-09-23 16:00 → 2015-09-23; baseline finish 2015-11-26 16:00 → 2015-11-26 |
| 44 | Send to color house | 2015-09-28 08:00 → 2015-10-05 (+7d) | 2015-09-28 17:00 → 2015-10-05 (+7d) |  |  |  | baseline start 2015-09-23 16:00 → 2015-09-23; baseline finish 2015-09-28 16:00 → 2015-09-28 |
| 45 | Generate proofs | 2015-09-29 08:00 → 2015-10-06 (+7d) | 2015-10-12 17:00 → 2015-10-19 (+7d) |  |  |  | baseline start 2015-09-28 16:00 → 2015-09-28; baseline finish 2015-10-12 16:00 → 2015-10-12 |
| 46 | Print and ship | 2015-10-16 08:00 → 2015-10-23 (+7d) | 2015-11-26 17:00 → 2015-12-03 (+7d) |  |  |  | baseline start 2015-10-15 16:00 → 2015-10-15; baseline finish 2015-11-26 16:00 → 2015-11-26 |
| 47 | **Book launch prep** | 2015-09-29 08:00 → 2015-10-06 (+7d) | 2015-10-28 17:00 → 2015-11-04 (+7d) |  |  |  | baseline start 2015-09-28 16:00 → 2015-09-28; baseline finish 2015-10-28 16:00 → 2015-10-28 |
| 48 | Launch planning | 2015-09-29 08:00 → 2015-10-06 (+7d) | 2015-10-05 17:00 → 2015-10-12 (+7d) |  |  |  | baseline start 2015-09-28 16:00 → 2015-09-28; baseline finish 2015-10-05 16:00 → 2015-10-05 |
| 49 | Assign launch team members | 2015-10-06 08:00 → 2015-10-13 (+7d) | 2015-10-06 17:00 → 2015-10-13 (+7d) |  |  |  | baseline start 2015-10-05 16:00 → 2015-10-05; baseline finish 2015-10-06 16:00 → 2015-10-06 |
| 50 | Complete author questionnaire | 2015-10-07 08:00 → 2015-10-14 (+7d) | 2015-10-13 17:00 → 2015-10-20 (+7d) |  |  |  | baseline start 2015-10-06 16:00 → 2015-10-06; baseline finish 2015-10-13 16:00 → 2015-10-13 |
| 51 | Schedule author interviews | 2015-10-14 08:00 → 2015-10-21 (+7d) | 2015-10-14 17:00 → 2015-10-21 (+7d) |  |  |  | baseline start 2015-10-13 16:00 → 2015-10-13; baseline finish 2015-10-14 16:00 → 2015-10-14 |
| 52 | Design and order marketing material | 2015-10-15 08:00 → 2015-10-22 (+7d) | 2015-10-28 17:00 → 2015-11-04 (+7d) |  |  |  | baseline start 2015-10-14 16:00 → 2015-10-14; baseline finish 2015-10-28 16:00 → 2015-10-28 |
